Schedule from MS Project, 2024-03-04 to 2024-08-14, status date 2024-06-14, 7 hours a day, A marks actual dates.

## Calendars

- Standard: Mon-Fri 09:00-12:00, 14:00-18:00; Sat-Sun off.

## Schedule

| ID | Task | Duration | Start | Finish | Predecessors | Complete | Remaining | Total slack | Free slack |
| --- | --- | --- | --- | --- | --- | --- | --- | --- | --- |
| 1 | Accès chantier | 2d | 2024-03-04 A | 2024-03-05 A |  | 100% |  |  |  |
| 2 | Réseaux primaires AU, EP… | 2d | 2024-03-06 A | 2024-03-07 A | 1 | 100% |  |  |  |
| 3 | Fouilles générales | 3d | 2024-03-08 A | 2024-03-12 A | 2 | 100% |  |  |  |
| 4 | Réseaux secondaires EU, EP… | 5d | 2024-07-18 | 2024-07-24 | 12, 23 |  |  | 0d |  |
| 5 | Remblai | 5d | 2024-07-25 | 2024-07-31 | 4 |  |  | 0d |  |
| 6 | Finitions extérieures terre végétale | 2d | 2024-08-01 | 2024-08-02 | 5 |  |  | 0d |  |
| 7 | Réalisation soubassement | 15d | 2024-03-13 A | 2024-04-02 A | 3 | 100% |  |  |  |
| 8 | Fabrication ossature bois | 25d | 2024-03-04 A | 2024-04-05 A |  | 100% |  |  |  |
| 9 | Pose ossature bois | 10d | 2024-04-08 A | 2024-04-19 A | 7, 8 | 100% |  |  |  |
| 10 | Escalier intérieur | 3d | 2024-07-11 | 2024-07-15 | 14, 20 |  |  | 22d |  |
| 11 | Couverture | 5d | 2024-04-22 A | 2024-04-26 A | 9 | 100% |  |  |  |
| 12 | Zinguerie | 2d | 2024-04-29 A | 2024-04-30 A | 11 | 100% |  |  |  |
| 13 | Menuiseries extérieures | 4d | 2024-04-29 A | 2024-05-02 A | 11 | 100% |  |  |  |
| 14 | Menuiseries intérieures huisseries | 4d | 2024-06-07 A | 2024-06-12 A | 13 | 100% |  |  |  |
| 15 | Menuiseries intérieures portes | 5d | 2024-08-01 | 2024-08-07 | 14, 21 |  |  | 2d |  |
| 16 | Serrures | 1d | 2024-08-12 | 2024-08-12 | 28, 5, 15 |  |  | 0d |  |
| 17 | Cloisons | 7d | 2024-06-18 A | 2024-06-26 A | 11, 14, 18 | 100% |  |  |  |
| 18 | Isolation / Doublage | 7d | 2024-06-07 A | 2024-06-17 A | 13 | 100% |  |  |  |
| 19 | Plafonds | 7d | 2024-06-27 A | 2024-07-05 | 17 | 80% | 1.4d | 0d |  |
| 20 | Chape carrelage | 3d | 2024-07-08 | 2024-07-10 | 14, 19 |  |  | 0d |  |
| 21 | Carrelage | 10d | 2024-07-18 | 2024-07-31 | 23, 20 |  |  | 2d | 0d |
| 22 | Pose tuyaux SS et VS | 3d | 2024-04-03 A | 2024-04-05 | 7 | 50% | 1.5d | 68d |  |
| 23 | Pose tuyau et sanitaires | 5d | 2024-07-11 | 2024-07-17 | 9, 22, 20 |  |  | 0d |  |
| 24 | Ballon eau chaude mise en charge | 2d | 2024-08-01 | 2024-08-02 | 4, 21 |  |  | 8d |  |
| 25 | Pose de fourreaux | 2d | 2024-04-03 A | 2024-04-04 A | 7 | 100% |  |  |  |
| 26 | Pose des équipements | 5d | 2024-07-11 | 2024-07-17 | 17, 25, 20 |  |  | 18d |  |
| 27 | Raccordement au réseau | 2d | 2024-08-13 | 2024-08-14 | 16, 26 |  |  | 0d |  |
| 28 | Lasure et peinture extérieure | 5d | 2024-08-05 | 2024-08-09 | 6, 13 |  |  | 0d |  |
